# Implementación de los sistemas Easy Retail y Contpaq i

Schedule from GanttProject, 2014-08-01 to 2016-11-16.
Gas Campanita SA de CV
Holidays every year on 01-01, 05-01, 09-16, 12-12, 12-25

## Calendars

- Project calendar: Mon-Sun working. Exceptions (off unless hours are given): 2016-02-01 (Constitution Day), 2016-03-14 (Birthday of Benito Juárez), 2016-03-24 (Maundy Thursday), 2016-08-01 (Good Friday).

## Schedule

| ID | WBS | Task | Duration | Start | Finish | Complete |
| --- | --- | --- | --- | --- | --- | --- |
| 1 | 1 | Implementación de base Easy Retail Admin | 1d | 2015-12-09 | 2015-12-09 | 100% |
| 2 | 2 | Desarrollos de interfaces para bases de datos de Contpaqi Contabilidad | 20d | 2015-11-27 | 2015-12-17 | 100% |
| 3 | 3 | Implementación de JD entre ERA - Contabilidad | 1d | 2015-12-07 | 2015-12-07 | 100% |
| 4 | 4 | Implementación de JD entre ERA - Bancos | 1d | 2015-12-07 | 2015-12-07 | 100% |
| 5 | 5 | **Primera Etapa de desarrollo personalizado para base de Easy Retail Admin** | 210d | 2016-01-04 | 2016-08-05 | 100% |
| 6 | 5.1 | Activos seleccionados por partida en los documentos (Compras, Ventas, Entradas y salidas de inventario). | 15d | 2016-01-04 | 2016-01-18 | 100% |
| 7 | 5.2 | Filtros en reporte de Clientes y Activos por serie. | 22d | 2016-01-04 | 2016-01-25 | 100% |
| 8 | 5.3 | Cuenta contable asignable por activo y por partida, que se muestre el catálogo de cuentas en compras y ventas. | 22d | 2016-01-04 | 2016-01-25 | 100% |
| 9 | 5.4 | Permitir aplicar un pago por concepto a varios documentos. | 1d | 2016-01-04 | 2016-01-04 | 100% |
| 10 | 5.5 | Permitir aplicar varios impuestos y retenciones por partida. | 15d | 2016-01-04 | 2016-01-18 | 100% |
| 11 | 5.6 | Permitir aplicar impuestos y retenciones porcentual o por un factor. | 15d | 2016-01-04 | 2016-01-18 | 100% |
| 12 | 5.7 | Reporte de CXC y CXP por folio de banco. | 22d | 2016-01-04 | 2016-01-25 | 100% |
| 13 | 5.8 | Permisos en CXC y CXP por usuario (visualizar, abonar) | 22d | 2016-01-04 | 2016-01-25 | 100% |
| 14 | 5.9 | Personalización en la frecuencia de las pólizas en el JD de ERA-CCON. | 15d | 2016-01-04 | 2016-01-18 | 100% |
| 15 | 5.10 | Importación de ventas diarias de Excel a ERA | 15d | 2016-01-04 | 2016-01-18 | 100% |
| 16 | 5.11 | Desarrollo para el manejo de 4 decimales en cantidades, totales, precio y reportes | 63d | 2016-04-04 | 2016-06-06 | 100% |
| 17 | 5.12 | Diseño de ordenes de compra, incluir logo para distinguir de qué empresa son | 3d | 2016-05-02 | 2016-05-04 | 100% |
| 18 | 5.13 | En la impresión de la compra, poner cuenta y activo al que se asignó | 3d | 2016-05-02 | 2016-05-04 | 100% |
| 19 | 5.14 | Apartado de pagos de nota, aplicar el filtro para que se puedan visualizar solo los que se necesitan pagar | 2d | 2016-05-03 | 2016-05-04 | 100% |
| 20 | 5.15 | Crear un reporte de pagos para CXC donde muestre los pagos realizados por cada documento, filtrado por los mismo que CXC excepto estado y folio banco (Usar tablas documentos_pagos y movimientos_pagos) | 3d | 2016-05-03 | 2016-05-05 | 100% |
| 21 | 5.16 | diseño de reportes, se debe de mostrar el encabezado en todas las paginas | 3d | 2016-05-16 | 2016-05-18 | 100% |
| 22 | 5.17 | Agregar los metodos de pago autorizados por el anexo 24 del SAT | 1d | 2016-05-19 | 2016-05-19 | 100% |
| 23 | 5.18 | Agregar fecha y hora de creación a los reportes. | 3d | 2016-05-21 | 2016-05-23 | 100% |
| 24 | 5.19 | Agregar el campo de observaciones al PDF de las notas de crédito | 3d | 2016-05-23 | 2016-05-25 | 100% |
| 25 | 5.20 | En la ventana de pagos generar una relación entre el documento y sus pagos | 5d | 2016-05-23 | 2016-05-27 | 100% |
| 26 | 5.21 | Diseñar una ventana de tickets facturados. | 5d | 2016-05-23 | 2016-05-27 | 100% |
| 27 | 5.22 | Que al momento de hacer una factura de crédito seleccionando ticket, te pueda permitir poner observaciones en la factura, ya que actualmente no lo permite. | 5d | 2016-06-02 | 2016-06-06 | 100% |
| 28 | 5.23 | Que aparezca el logo de la empresa en la compra. | 3d | 2016-06-04 | 2016-06-06 | 100% |
| 29 | 5.24 | Los totales en el pdf de la factura no cuentan con espacio suficiente por lo que no se ven las cantidades, hay que rediseñar | 2d | 2016-06-13 | 2016-06-14 | 100% |
| 30 | 5.25 | Eliminar la opción de Catálogo de Pagos Módulos>Ventas>Tipos de Pago | 3d | 2016-06-14 | 2016-06-16 | 100% |
| 31 | 5.26 | habiliar la generación del pdf de la factura cuando se presione el boton de Timbrar. | 2d | 2016-06-15 | 2016-06-16 | 100% |
| 32 | 5.27 | Aumentar el paginado de ventas a 100 para que se puedan facturar un rango más amplio de tickets. | 3d | 2016-06-27 | 2016-06-29 | 100% |
| 33 | 5.28 | Enviar al pdf de la factura la descripción del método de pago y el código al xml | 2d | 2016-06-28 | 2016-06-29 | 100% |
| 34 | 5.29 | En el reporte de ventas incrementar el espacio para mostrar los totales en el resumen del reporte ya que no se ve la cantidad cuando es muy grande (millones) | 4d | 2016-08-02 | 2016-08-05 | 100% |
| 35 | 5.30 | Error numero de columnas no coincide con el numero de valores a insertar | 1d | 2016-07-13 | 2016-07-13 |  |
| 36 | 5.31 | Mostrar en el PDF de la factura el descuento. (PDF 1,2,3,5 decimales) | 3d | 2016-07-24 | 2016-07-26 | 100% |
| 37 | 5.32 | Agregar en el xml en el domicilio del Receptor el Codigo Postal | 5d | 2016-07-22 | 2016-07-26 | 100% |
| 38 | 5.33 | Que al momento de obtener un reporte de encabezados o en un reporte nuevo, nos diga los ticket que ya están facturados y con qué número y que se pueda obtener detallado o totalizado por documento | 2d | 2016-07-27 | 2016-07-28 | 100% |
| 39 | 5.34 | Que al momento de seleccionar ticket para facturar te dé un total previo para validar con lo que se quiere facturar. | 4d | 2016-08-02 | 2016-08-05 | 100% |
| 40 | 5.35 | Mostrar en el PDF de la factura el descuento. (PDF 0,4,6 decimales) | 23d | 2016-07-01 | 2016-07-23 | 100% |
| 41 | 5.36 | Que al momento de obtener un reporte de encabezados o en un reporte nuevo, nos diga los ticket que ya están facturados y con qué número y que se pueda obtener detallado o totalizado por documento | 4d | 2016-08-02 | 2016-08-05 | 100% |

| ID | WBS | Task | Duration | Start | Finish | Complete | Constraint |
| --- | --- | --- | --- | --- | --- | --- | --- |
| 42 | 6 | **Segunda Etapa de desarrollo personalizado para base Easy Retail Admin** | 104d | 2016-08-04 | 2016-11-16 | 44% | start no earlier than 2016-08-04 |
| 43 | 6.1 | Habilitar en el reporte de antigüedad de saldos el filtro por serie-documento | 3d | 2016-08-08 | 2016-08-10 | 100% |  |
| 44 | 6.2 | En compras cuando se genere el JD, nos indique en la poliza el número de proveedor ademas de el número de la orden de compra | 3d | 2016-08-13 | 2016-08-15 | 100% |  |
| 45 | 6.3 | Agregar configuración para hacer obligatorio el campo de Activo y Cuenta Contable en los Pagos | 2d | 2016-08-04 | 2016-08-05 | 100% |  |
| 46 | 6.4 | Agregar el "Nombre de cliente", ademas del codigo, en los reportes de ventas | 10d | 2016-08-10 | 2016-08-19 | 50% |  |
| 47 | 6.5 | Revisar que al generar las pólizas no se generen con cuenta de cuadre | 1d | 2016-09-13 | 2016-09-13 |  |  |
| 48 | 6.6 | Revisar que se calcule correctamente el IVA cuando se facturan tickets | 1d | 2016-09-27 | 2016-09-27 |  |  |
| 49 | 6.7 | Crear un Query para que los tickets cancelados con anterioridad no se dupliquen | 1d | 2016-09-27 | 2016-09-27 |  |  |
| 50 | 6.8 | Reportes de antigüedad de saldos, debe filtrar por fechas para que permita ver el historial | 1d | 2016-09-13 | 2016-09-13 |  |  |
| 51 | 6.9 | Pruebas, crear un query para corregir las cxc que tienen doble registro en la tabla de cxc | 1d | 2016-09-13 | 2016-09-13 |  |  |
| 52 | 6.10 | se necesita un concepto de descuento esto para identificar los pagos de cartera | 1d | 2016-09-13 | 2016-09-13 |  |  |
| 53 | 6.11 | validar que al agregar mas de dos partidas no se calcule mal el importe | 1d | 2016-09-13 | 2016-09-13 |  |  |
| 54 | 6.12 | validar, al momento de capturar una compra respete la fecha que se captura en el registro, ocea la fecha de la factura1 | 1d | 2016-09-13 | 2016-09-13 |  |  |
| 55 | 6.13 | Crear mas de un asiento contable por serie para que permita la creación de una segunda poliza por evento, | 1d | 2016-09-13 | 2016-09-13 |  |  |
| 56 | 6.14 | validación, al agregar productos de un documento de compra a un factura que si baje los importes correctos, | 1d | 2016-11-11 | 2016-11-11 |  |  |
| 57 | 6.15 | Envio de correos al hacer las facturas de los tickets | 1d | 2016-11-16 | 2016-11-16 |  |  |
| 58 | 6.16 | el botón de timbrado debe hacer su función | 1d | 2014-08-01 | 2014-08-01 |  |  |
